# v3.2 Financial Team Labor Estimate and Allocation_Final - A.K-Shuk-Diana Updated

Schedule from MS Project, 2016-10-03 to 2017-02-02, 6 hours a day, costs in $.

## Calendars

- Standard: Mon-Fri 08:00-12:00, 13:00-17:00; Sat-Sun off. Exceptions (off unless hours are given): 2016-11-24 to 2016-11-25 (Thanksgiving), 2016-12-23 (Time off), 2016-12-26 (time off), 2016-12-30 (time off).

## Resources

| Resource | Rate |
| --- | --- |
| Database Developer | 90 |
| Server Administrator | 47 |
| Network designer | 120 |
| Software Engineer | 120 |
| ETL Developer | 80 |
| Programmer Analyst | 100 |
| QA Analyst 1 | 85 |
| BI Analyst | 125 |
| Systems Analyst | 80 |
| Business Analyst | 85 |
| Data Architect | 110 |
| Process Architect | 110 |
| Software Architect | 115 |
| Project Manager | 115 |
| Program Manager | 130 |
| <New Resource> |  |
| Legal Team |  |
| Finance Master SME/Trainer | 150 |
| Procedure Writer | 70 |
| Software Tester | 80 |
| Internal IT |  |
| Internal HR |  |
| QA Analyst 2 | 85 |
| Systems Analyst 2 | 85 |
| BI Analyst 2 | 125 |
| Business Analyst 2 | 85 |

## Schedule

| ID | WBS | Task | Duration | Start | Finish | Predecessors | Total slack | Free slack | Constraint | Resources | Work | Cost |
| --- | --- | --- | --- | --- | --- | --- | --- | --- | --- | --- | --- | --- |
| 1 | 1 | **Finance Master Project** | 111d | 2016-10-03 | 2017-02-02 |  | 0d |  |  |  | 1750.64h | 159,673.3 |
| 2 | 1.1 | **1.0 Gather and analyze requirements for new system** | 24d | 2016-10-03 | 2016-10-26 |  |  |  |  |  | 350h | 31,748.4 |
| 3 | 1.1.1 | **1.1 Compliance requirements** | 19d | 2016-10-03 | 2016-10-21 |  |  |  |  |  | 147h | 13,215 |
| 4 | 1.1.1.1 | 1.1.1 Gather HR requirements | 4d | 2016-10-03 | 2016-10-05 |  | 17d | 4d | start no earlier than 2016-10-03 | Business Analyst [50%] | 12h | 1,020 |
| 5 | 1.1.1.2 | 1.1.2 Gather IT requirements | 4d | 2016-10-03 | 2016-10-05 |  | 12d | 0d | start no earlier than 2016-10-03 | Business Analyst 2 [50%] | 12h | 1,020 |
| 6 | 1.1.1.3 | 1.1.3 Gather project requirements | 8d | 2016-10-03 | 2016-10-10 |  | 13d | 0d | start no earlier than 2016-10-03 | Business Analyst [50%] | 24h | 2,040 |
| 7 | 1.1.1.4 | 1.1.4 Gather individual user requirements | 3d | 2016-10-03 | 2016-10-05 |  | 13d | 1d | start no earlier than 2016-10-03 | Business Analyst 2 [50%] | 9h | 765 |
| 8 | 1.1.1.5 | 1.1.5 Gather regulatory requirements | 3d | 2016-10-11 | 2016-10-13 | 4, 5, 6, 7 | 13d | 3.67d |  | Business Analyst | 18h | 1,530 |
| 9 | 1.1.1.6 | 1.2.6 Analyze requirements | 4d | 2016-10-18 | 2016-10-20 | 8 | 14.33d | 5d | finish no earlier than 2016-10-20 | Business Analyst; Project Manager; Systems Analyst [50%]; Data Architect [50%]; Business Analyst 2 | 72h | 6,840 |
| 10 | 1.1.2 | **1.2 Technology requirements** | 9d | 2016-10-18 | 2016-10-26 |  | 9.33d |  |  |  | 85h | 6,913.4 |
| 11 | 1.1.2.1 | 1.2.1 Gather runtime requirements | 7d | 2016-10-18 | 2016-10-25 | 5, 8 | 9.33d | 0d | start no earlier than 2016-10-18 | Data Architect [50%]; Server Administrator [25%] | 26.5h | 2,253.5 |
| 12 | 1.1.2.2 | 1.2.2 Gather server requirements | 7d | 2016-10-18 | 2016-10-25 | 5, 8 | 9.33d | 0d | start no earlier than 2016-10-18 | Server Administrator [25%] | 10.5h | 493.5 |
| 13 | 1.1.2.3 | 1.2.4 Gather test environment requirements | 2d | 2016-10-18 | 2016-10-19 | 5, 8 | 14.33d | 5d | start no earlier than 2016-10-18 | QA Analyst 1 | 12h | 1,020 |
| 14 | 1.1.2.4 | 1.2.5 Analyze requirements | 2d | 2016-10-25 | 2016-10-26 | 13, 11, 12 | 9.33d | 0d | start no earlier than 2016-10-19 | Project Manager [60%]; QA Analyst 1 [60%]; Systems Analyst [60%]; Data Architect [60%]; Server Administrator [60%] | 36h | 3,146.4 |
| 15 | 1.1.3 | **1.3 FinanceMaster requirements** | 17d | 2016-10-06 | 2016-10-24 |  | 12d |  |  |  | 118h | 11,620 |
| 16 | 1.1.3.1 | 1.3.1 Gather per-license requirements | 4d | 2016-10-06 | 2016-10-10 | 5, 7 | 12d | 0d |  | Legal Team | 24h |  |
| 17 | 1.1.3.2 | 1.3.2 Gather maintenance fee requirements | 4d | 2016-10-11 | 2016-10-13 | 5, 16 | 12d | 0d |  | BI Analyst | 24h | 3,000 |
| 18 | 1.1.3.3 | 1.3.3 Gather training requirements | 5d | 2016-10-14 | 2016-10-19 | 17 | 12d | 0d |  | Finance Master SME/Trainer | 30h | 4,500 |
| 19 | 1.1.3.4 | 1.3.4 Analyze requirements | 4d | 2016-10-19 | 2016-10-24 | 18 | 12d | 2.67d |  | BI Analyst; Business Analyst | 40h | 4,120 |
| 20 | 1.2 | **2.0 Finalizing modular design of new system** | 19d | 2016-10-19 | 2016-11-08 |  |  |  |  |  | 373.5h | 35,512.5 |
| 21 | 1.2.1 | **2.1 Re-review module design** | 9d | 2016-10-26 | 2016-11-04 |  | 9.33d |  |  |  | 108h | 11,340 |
| 22 | 1.2.1.1 | 2.1.1 Identify conflicts in departmental, user, and project requirements at “compromise” price point module | 7d | 2016-10-26 | 2016-11-02 | 14, 19, 9 | 9.33d | 0d |  | BI Analyst; Business Analyst | 84h | 8,820 |
| 23 | 1.2.1.2 | 2.1.2 Identify opportunitties for further integration | 2d | 2016-11-03 | 2016-11-04 | 19, 22 | 78.33d |  |  | BI Analyst; Business Analyst | 24h | 2,520 |
| 24 | 1.2.2 | **2.2 Identify missing components in proposed “compromise” module group for each:** | 8d | 2016-10-19 | 2016-10-27 |  | 14d |  |  |  | 151.5h | 11,482.5 |
| 25 | 1.2.2.1 | 2.2.1 IT | 8d | 2016-10-19 | 2016-10-27 | 18 | 20d | 10.67d |  | Systems Analyst [25%]; Database Developer [25%]; Internal IT [25%]; Software Architect [25%]; QA Analyst 2 [25%]; Systems Analyst 2 [25%] | 71.5h | 5,420 |
| 26 | 1.2.2.2 | 2.2.2 HR | 4d | 2016-10-19 | 2016-10-24 | 18 | 24d | 14.67d |  | Systems Analyst [25%]; Database Developer [25%]; Internal IT [25%]; Software Architect [25%]; QA Analyst 2 [25%]; Systems Analyst 2 [25%] | 26.5h | 2,007.5 |
| 27 | 1.2.2.3 | 2.2.3 Projects | 4d | 2016-10-19 | 2016-10-24 | 18 | 24d | 14.67d |  | Systems Analyst [25%]; Database Developer [25%]; Internal IT [25%]; Software Architect [25%]; QA Analyst 2 [25%]; Systems Analyst 2 [25%] | 26.5h | 2,007.5 |
| 28 | 1.2.2.4 | 2.2.4 End users | 3d | 2016-10-19 | 2016-10-21 | 18 | 14d | 0d |  | Systems Analyst [25%]; Database Developer [25%]; Internal IT [25%]; Software Architect [25%]; QA Analyst 2 [25%]; Systems Analyst 2 [25%] | 27h | 2,047.5 |
| 29 | 1.2.3 | 2.3 Build test plan | 4d | 2016-10-24 | 2016-10-28 | 28 | 14d | 4.67d |  | QA Analyst 1 | 24h | 2,040 |
| 30 | 1.2.4 | 2.4 Re-design and finalize module groupings to prioritize (x,y,z) | 5d | 2016-11-03 | 2016-11-08 | 29, 22 | 9.33d | 0d |  | Process Architect; Program Manager; Project Manager | 90h | 10,650 |

Notes:
- 4: Gather requirements pertained to the HR processes and data elements
- 5: Gather IT requirements: technologies, hardware, software, maintenance and etc.
- 6: Gather integration requirments to bring together HR, IT, User, and regulatory requirements
- 7: Gather usability and functionality requirements.
- 8: Assure that all the regulatory requirements are accounted for and are addressed.
- 9: Complete the BRD
- 11: Identify and plan for the deployment and usage of the code run-time environement.
- 12: Identify software/hardware server requirements.
- 13: Identify software/hardware integration testing approaches and requiremnts
- 14: Consolidate and document technology requirements

| ID | WBS | Task | Duration | Start | Finish | Predecessors | Total slack | Free slack | Constraint | Resources | Work | Cost |
| --- | --- | --- | --- | --- | --- | --- | --- | --- | --- | --- | --- | --- |
| 31 | 1.3 | **3.0 Calculate entire cost of project** | 7d | 2016-11-08 | 2016-11-15 |  | 9.33d |  |  |  | 35.4h | 4,197 |
| 32 | 1.3.1 | 3.1 Modules to be purchased | 7d | 2016-11-08 | 2016-11-15 | 30, 25, 26, 27, 28, 29 | 9.33d | 0d |  | Program Manager [20%] | 8.4h | 1,092 |
| 33 | 1.3.2 | 3.2 Internal Project Time | 3d | 2016-11-08 | 2016-11-10 | 30 | 13.33d | 3d |  | Project Manager [50%] | 9h | 1,035 |
| 34 | 1.3.3 | 3.3 Establish system for tracking cost savings and improvements once implemented | 6d | 2016-11-08 | 2016-11-15 | 30 | 10.33d | 0d |  | Project Manager [50%] | 18h | 2,070 |
| 35 | 1.4 | **4.0 Setup new system (without switching over)** | 4d | 2016-11-15 | 2016-11-18 |  | 9.33d |  |  |  | 143.5h | 14,830 |
| 36 | 1.4.1 | 4.1 IT sets up internal environment for system transfer | 3d | 2016-11-15 | 2016-11-17 | 34, 33 | 10.33d | 1d |  | Network designer | 18h | 2,160 |
| 37 | 1.4.2 | 4.2 FinanceMaster sets up software modules | 3d | 2016-11-16 | 2016-11-18 | 32 | 9.33d | 0d |  | Programmer Analyst | 18h | 1,800 |
| 38 | 1.4.3 | 4.3 Develop code | 3d | 2016-11-16 | 2016-11-18 | 32 | 9.33d | 0d |  | Software Engineer [75%]; BI Analyst [50%]; Business Analyst [75%]; Database Developer [75%]; Internal IT [75%]; QA Analyst 1 [75%] | 49h | 4,165 |
| 39 | 1.4.4 | 4.5 Create procedures | 3d | 2016-11-16 | 2016-11-18 | 32 | 9.33d | 0d |  | Procedure Writer [25%]; Database Developer [25%]; QA Analyst 1 [25%]; Software Engineer [25%] | 18h | 1,642.5 |
| 40 | 1.4.5 | 4.6 Provide training to relevant staff | 3d | 2016-11-16 | 2016-11-18 | 32 | 9.33d | 0d |  | Finance Master SME/Trainer | 18h | 2,700 |
| 41 | 1.4.6 | 4.7 Adjust company processes to reflect new software package | 3d | 2016-11-16 | 2016-11-18 | 32 | 9.33d | 0d |  | Business Analyst [25%]; Process Architect | 22.5h | 2,362.5 |
| 42 | 1.5 | **5.0 Testing new system (without switching over)** | 22d | 2016-11-18 | 2016-12-14 |  | 2.33d |  |  |  | 396h | 36,180 |
| 43 | 1.5.1 | 5.1 Functional testing | 5d | 2016-11-18 | 2016-11-23 | 41, 36, 37, 38, 39, 40 | 9.33d | 0d |  | Software Tester; QA Analyst 1; QA Analyst 2 | 90h | 7,500 |
| 44 | 1.5.2 | 5.2 End user training | 5d | 2016-11-28 | 2016-12-01 | 43 | 9.33d | 0d |  | Finance Master SME/Trainer; Business Analyst; BI Analyst 2 | 90h | 10,800 |
| 45 | 1.5.3 | 5.3 User acceptance testing | 3d | 2016-12-01 | 2016-12-05 | 44 | 11.33d | 9d |  | Business Analyst; BI Analyst 2 | 36h | 3,780 |
| 46 | 1.5.4 | 5.5 Resolve any user issues with software customer support | 5d | 2016-12-09 | 2016-12-14 | 44 | 2.33d | 0d | start no earlier than 2016-12-09 | Business Analyst; Business Analyst 2; Data Architect; Internal IT; Process Architect; Systems Analyst | 180h | 14,100 |
| 47 | 1.6 | **6.0 Switch over system: back up old system and move new system to production** | 27d | 2016-12-14 | 2017-01-16 |  | 2.33d |  |  |  | 277.52h | 18,048.6 |
| 48 | 1.6.1 | **6.1 Back up all old systems** | 5d | 2016-12-14 | 2016-12-20 |  | 2.33d |  |  |  | 106h | 10,355 |
| 49 | 1.6.1.1 | 6.1.2 IT back up | 5d | 2016-12-14 | 2016-12-20 | 45, 46 | 2.33d | 0d |  | Systems Analyst; Software Architect [50%]; Software Engineer [50%] | 60h | 5,925 |
| 50 | 1.6.1.2 | 6.1.3 HR back up | 5d | 2016-12-14 | 2016-12-20 | 44, 46 | 2.33d | 0d |  | Software Architect [50%]; Software Engineer [50%]; Systems Analyst 2 | 46h | 4,430 |
| 51 | 1.6.2 | **6.2 Old system close down** | 2d | 2016-12-20 | 2016-12-21 |  | 2.33d |  |  |  | 12h | 990 |
| 52 | 1.6.2.1 | 6.2.1 Old IT system close down | 1d | 2016-12-20 | 2016-12-21 | 36, 49 | 2.33d | 0d |  | Systems Analyst [95%] | 5.7h | 456 |
| 53 | 1.6.2.2 | 6.2.2 Old HR system close down | 1d | 2016-12-20 | 2016-12-21 | 50, 37 | 2.33d | 0d |  | Systems Analyst 2 [95%] | 5.7h | 484.5 |
| 54 | 1.6.2.3 | 6.2.3 Confirm successful all-system shut downn | 1d | 2016-12-21 | 2016-12-21 | 52, 53 | 2.33d | 0d |  | Systems Analyst [5%]; Systems Analyst 2 [5%] | 0.6h | 49.5 |

| ID | WBS | Task | Type | Duration | Start | Finish | Predecessors | Total slack | Free slack | Constraint | Resources | Work | Cost |
| --- | --- | --- | --- | --- | --- | --- | --- | --- | --- | --- | --- | --- | --- |
| 55 | 1.6.3 | **6.3 Start up new system** |  | 20d | 2016-12-22 | 2017-01-16 |  | 2.33d |  |  |  | 159.52h | 6,703.6 |
| 56 | 1.6.3.1 | 6.3.1 Initiate new system |  | 4d | 2016-12-22 | 2016-12-28 | 54 | 2.33d | 0d |  | Systems Analyst [33%]; Internal IT [80%] | 23.92h | 633.6 |
| 57 | 1.6.3.2 | 6.3.2 Check new system in IT |  | 13d | 2016-12-29 | 2017-01-12 | 56 | 2.33d | 0d |  | Internal IT [10%]; Systems Analyst [33%] | 23.8h | 1,280 |
| 58 | 1.6.3.3 | 6.3.3 Check new system in HR |  | 13d | 2016-12-29 | 2017-01-12 | 56 | 2.33d | 0d |  | Internal HR; Internal IT [10%]; Systems Analyst [50%] | 39.8h | 1,280 |
| 59 | 1.6.3.4 | 6.3.4 Check integration success and overall system functioning |  | 3d | 2017-01-12 | 2017-01-16 | 57, 58 | 2.33d |  |  | Project Manager; Internal HR; Internal IT; Systems Analyst | 72h | 3,510 |
| 60 | 1.7 | **7.0 Create maintenance and user documentation** |  | 7d | 2017-01-18 | 2017-01-25 |  | 0d |  |  |  | 126h | 13,440 |
| 61 | 1.7.1 | 7.1 Develop infrastracture maintenance documentation |  | 7d | 2017-01-18 | 2017-01-25 | 59 | 4d | 2.33d | finish no earlier than 2017-01-25 | Network designer | 42h | 5,040 |
| 62 | 1.7.2 | 7.2 Develop software maintenance documentation |  | 7d | 2017-01-18 | 2017-01-25 | 59 | 0d |  | finish no earlier than 2017-01-25 | Software Architect | 42h | 4,830 |
| 63 | 1.7.3 | 7.3 Develop user manuals |  | 7d | 2017-01-18 | 2017-01-25 | 59 | 4d | 2.33d | finish no earlier than 2017-01-25 | Business Analyst | 42h | 3,570 |
| 64 | 1.8 | **8.0 Develop monitoring and maintenance schedules and controls** |  | 7d | 2017-01-26 | 2017-02-02 |  | 0d |  |  |  | 48.72h | 5,716.8 |
| 65 | 1.8.1 | 8.1 Create maintenance schedule |  | 7d | 2017-01-26 | 2017-02-02 | 62 | 0d |  |  | Software Engineer [20%]; Project Manager [33%] | 22.26h | 2,601.9 |
| 66 | 1.8.2 | 8.2 Create monitoring controls |  | 3d | 2017-01-26 | 2017-01-30 | 62 | 4d |  | start no earlier than 2017-01-23 | Software Engineer [60%]; Project Manager [33%] | 16.74h | 1,979.1 |
| 67 | 1.8.3 | 8.3 Create periodic auditing schedule |  | 3d | 2017-01-27 | 2017-01-31 | 62, 61, 63 | 1.67d | 0d | finish no earlier than 2017-01-31 | Software Engineer [20%]; Project Manager [34%] | 9.72h | 1,135.8 |
| 68 | 2 | Finance Master End | milestone | 0d | 2017-01-31 | 2017-01-31 | 67 | 1.67d |  |  |  |  |  |
