# Financial Team Labor Estimate and Allocation_DP

Schedule from MS Project, 2016-10-03 to 2017-01-31, costs in $.

## Calendars

- Standard: Mon-Fri 08:00-12:00, 13:00-17:00; Sat-Sun off. Exceptions (off unless hours are given): 2016-11-24 to 2016-11-25 (holiday), 2016-12-23 (Time off), 2016-12-26 (time off), 2016-12-30 (time off).

## Resources

| Resource | Rate |
| --- | --- |
| Database Developer | 90 |
| Server Administrator | 47 |
| Network designer | 120 |
| Software Engineer | 120 |
| ETL Developer | 80 |
| Programmer Analyst | 100 |
| QA Analyst 1 | 85 |
| BI Analyst | 125 |
| Systems Analyst | 80 |
| Business Analyst | 85 |
| Data Architect | 110 |
| Process Architect | 110 |
| Software Architect | 115 |
| Project Manager | 115 |
| Program Manager | 130 |
| <New Resource> |  |
| Legal Team |  |
| Finance Master SME/Trainer | 150 |
| Procedure Writer | 70 |
| Software Tester | 80 |
| Internal IT |  |
| Internal HR |  |
| QA Analyst 2 | 85 |
| Systems Analyst 2 | 85 |
| BI Analyst 2 | 125 |
| Business Analyst 2 | 85 |

## Schedule

| ID | WBS | Task | Duration | Start | Finish | Predecessors | Total slack | Free slack | Constraint | Resources | Work | Cost |
| --- | --- | --- | --- | --- | --- | --- | --- | --- | --- | --- | --- | --- |
| 1 | 1 | **Finance Master Project** | 82d | 2016-10-03 | 2017-01-31 |  | 0d |  |  |  | 1625.44h | 146,501.6 |
| 2 | 1.1 | **1.0 Gather and Analyze Requirements** | 18d | 2016-10-03 | 2016-10-26 |  | 7.95d |  |  |  | 356h | 32,375.2 |
| 3 | 1.1.1 | **1.1 Compliance Requirements** | 14d | 2016-10-03 | 2016-10-20 |  | 9.95d |  |  |  | 144h | 12,960 |
| 4 | 1.1.1.1 | 1.1.1 Gather HR requirements | 3d | 2016-10-03 | 2016-10-05 |  | 11d | 3d | start no earlier than 2016-10-03 | Business Analyst [50%] | 12h | 1,020 |
| 5 | 1.1.1.2 | 1.1.2 Gather IT requirements | 3d | 2016-10-03 | 2016-10-05 |  | 8d | 0d | start no earlier than 2016-10-03 | Business Analyst 2 [50%] | 12h | 1,020 |
| 6 | 1.1.1.3 | 1.1.3 Gather Project requirements | 6d | 2016-10-03 | 2016-10-10 |  | 8d | 0d | start no earlier than 2016-10-03 | Business Analyst [50%] | 24h | 2,040 |
| 7 | 1.1.1.4 | 1.1.4 Gather Individual user requirements | 2d | 2016-10-03 | 2016-10-04 |  | 9d | 1d | start no earlier than 2016-10-03 | Business Analyst 2 [50%] | 8h | 680 |
| 8 | 1.1.1.5 | 1.1.5 Gather Regulatory requirements | 2d | 2016-10-11 | 2016-10-12 | 4, 5, 6, 7 | 8d | 3d |  | Business Analyst | 16h | 1,360 |
| 9 | 1.1.1.6 | 1.2.6 Analyze requirements | 3d | 2016-10-18 | 2016-10-20 | 8 | 11.95d | 4d | finish no earlier than 2016-10-20 | Business Analyst; Project Manager; Systems Analyst [50%]; Data Architect [50%]; Business Analyst 2 | 72h | 6,840 |
| 10 | 1.1.2 | **1.2 Technology Requirements** | 7d | 2016-10-18 | 2016-10-26 |  | 7.95d |  |  |  | 100h | 8,255.2 |
| 11 | 1.1.2.1 | 1.2.1 Gather Runtime requirements | 5d | 2016-10-18 | 2016-10-24 | 5, 8 | 5d | 0d | start no earlier than 2016-10-18 | Data Architect [50%]; Server Administrator [25%] | 26h | 2,230 |
| 12 | 1.1.2.2 | 1.2.2 Gather Server requirements | 5d | 2016-10-18 | 2016-10-24 | 5, 8 | 5d | 0d | start no earlier than 2016-10-18 | Server Administrator [25%] | 10h | 470 |
| 13 | 1.1.2.3 | 1.2.4 Gather Test environment requirements | 2d | 2016-10-18 | 2016-10-19 | 5, 8 | 8d | 3d | start no earlier than 2016-10-18 | QA Analyst 1 | 16h | 1,360 |
| 14 | 1.1.2.4 | 1.2.5 Analyze requirements | 2d | 2016-10-25 | 2016-10-26 | 13, 11, 12 | 7.95d | 0d | start no earlier than 2016-10-19 | Project Manager [60%]; QA Analyst 1 [60%]; Systems Analyst [60%]; Data Architect [60%]; Server Administrator [60%] | 48h | 4,195.2 |
| 15 | 1.1.3 | **1.3 FinanceMaster requirements** | 12d | 2016-10-06 | 2016-10-21 |  | 9.95d |  |  |  | 112h | 11,160 |
| 16 | 1.1.3.1 | 1.3.1 Gather Per-license requirements | 3d | 2016-10-06 | 2016-10-10 | 5, 7 | 8d | 0d |  | Legal Team | 24h |  |
| 17 | 1.1.3.2 | 1.3.2 Gather Maintenance fee requirements | 3d | 2016-10-11 | 2016-10-13 | 5, 16 | 8d | 0d |  | BI Analyst | 24h | 3,000 |
| 18 | 1.1.3.3 | 1.3.3 Gather Training requirements | 4d | 2016-10-14 | 2016-10-19 | 17 | 8d | 0d |  | Finance Master SME/Trainer | 32h | 4,800 |
| 19 | 1.1.3.4 | 1.3.4 Analyze requirements | 2d | 2016-10-20 | 2016-10-21 | 18 | 8d | 3d |  | BI Analyst; Business Analyst | 32h | 3,360 |
| 20 | 1.2 | **2.0 Design** | 14d | 2016-10-20 | 2016-11-08 |  | 7.95d |  |  |  | 344h | 32,720 |
| 21 | 1.2.1 | **2.1 Re-review module design approach** | 5d | 2016-10-27 | 2016-11-02 |  | 7.95d |  |  |  | 80h | 8,400 |
| 22 | 1.2.1.1 | 2.1.1 Identify conflicts in departmental, user, and project requirements at “compromise” price point module | 5d | 2016-10-27 | 2016-11-02 | 14, 19, 9 | 7.95d | 0d |  | BI Analyst; Business Analyst | 80h | 8,400 |
| 23 | 1.2.2 | **2.2 Identify missing components in proposed “compromise” module group for each:** | 7d | 2016-10-20 | 2016-10-28 |  | 9.95d |  |  |  | 144h | 10,920 |
| 24 | 1.2.2.1 | 2.2.1 IT | 7d | 2016-10-20 | 2016-10-28 | 18 | 14.95d | 7d |  | Systems Analyst [25%]; Database Developer [25%]; Internal IT [25%]; Software Architect [25%]; QA Analyst 2 [25%]; Systems Analyst 2 [25%] | 72h | 5,460 |
| 25 | 1.2.2.2 | 2.2.2 HR | 2d | 2016-10-20 | 2016-10-21 | 18 | 17d | 12d |  | Systems Analyst [25%]; Database Developer [25%]; Internal IT [25%]; Software Architect [25%]; QA Analyst 2 [25%]; Systems Analyst 2 [25%] | 24h | 1,820 |
| 26 | 1.2.2.3 | 2.2.3 Projects | 2d | 2016-10-20 | 2016-10-21 | 18 | 17d | 12d |  | Systems Analyst [25%]; Database Developer [25%]; Internal IT [25%]; Software Architect [25%]; QA Analyst 2 [25%]; Systems Analyst 2 [25%] | 24h | 1,820 |
| 27 | 1.2.2.4 | 2.2.4 End users | 3d | 2016-10-20 | 2016-10-24 | 18 | 9.95d | 0d |  | Systems Analyst [25%]; Database Developer [25%]; Internal IT [25%]; Software Architect [25%]; QA Analyst 2 [25%]; Systems Analyst 2 [25%] | 24h | 1,820 |
| 28 | 1.2.3 | 2.4 Build test plan | 3d | 2016-10-27 | 2016-10-31 | 27 | 9.95d | 2d |  | QA Analyst 1 | 24h | 2,040 |
| 29 | 1.2.4 | 2.5 Re-design module groupings to prioritize (x,y,z) | 4d | 2016-11-03 | 2016-11-08 | 28, 22 | 7.95d | 0d |  | Process Architect; Program Manager; Project Manager | 96h | 11,360 |

| ID | WBS | Task | Duration | Start | Finish | Predecessors | Total slack | Free slack | Constraint | Resources | Work | Cost |
| --- | --- | --- | --- | --- | --- | --- | --- | --- | --- | --- | --- | --- |
| 30 | 1.3 | **3.0 Calculate entire cost of project** | 5d | 2016-11-09 | 2016-11-15 |  | 7.95d |  |  |  | 36h | 4,260 |
| 31 | 1.3.1 | 3.1 Modules to be purchased | 5d | 2016-11-09 | 2016-11-15 | 29, 24, 25, 26, 27, 28 | 7.95d | 0d |  | Program Manager [20%] | 8h | 1,040 |
| 32 | 1.3.2 | 3.2 Internal Project Time | 2d | 2016-11-09 | 2016-11-10 | 29 | 10.95d | 3d |  | Project Manager [50%] | 8h | 920 |
| 33 | 1.3.3 | 3.3 Establish system for tracking cost savings and improvements once implemented | 5d | 2016-11-09 | 2016-11-15 | 29 | 7.95d | 0d |  | Project Manager [50%] | 20h | 2,300 |
| 34 | 1.4 | **4.0 Setup new system (without switching over)** | 2d | 2016-11-16 | 2016-11-17 |  | 7.95d |  |  |  | 132h | 13,520 |
| 35 | 1.4.1 | 4.1 IT sets up internal environment for system transfer | 2d | 2016-11-16 | 2016-11-17 | 33, 32 | 7.95d | 0d |  | Network designer | 16h | 1,920 |
| 36 | 1.4.2 | 4.2 FinanceMaster sets up software modules | 2d | 2016-11-16 | 2016-11-17 | 31 | 7.95d | 0d |  | Programmer Analyst | 16h | 1,600 |
| 37 | 1.4.3 | 4.3 Develop code | 2d | 2016-11-16 | 2016-11-17 | 31 | 7.95d | 0d |  | Software Engineer [75%]; BI Analyst [50%]; Business Analyst [75%]; Database Developer [75%]; Internal IT [75%]; QA Analyst 1 [75%] | 48h | 4,040 |
| 38 | 1.4.4 | 4.5 Create procedures | 2d | 2016-11-16 | 2016-11-17 | 31 | 7.95d | 0d |  | Procedure Writer [25%]; Database Developer [25%]; QA Analyst 1 [25%]; Software Engineer [25%] | 16h | 1,460 |
| 39 | 1.4.5 | 4.6 Provide training to relevant staff | 2d | 2016-11-16 | 2016-11-17 | 31 | 7.95d | 0d |  | Finance Master SME/Trainer | 16h | 2,400 |
| 40 | 1.4.6 | 4.7 Adjust company processes to reflect new software package | 2d | 2016-11-16 | 2016-11-17 | 31 | 7.95d | 0d |  | Business Analyst [25%]; Process Architect | 20h | 2,100 |
| 41 | 1.5 | **5.0 Testing (without switching over)** | 17d | 2016-11-18 | 2016-12-14 |  | 2.95d |  |  |  | 416h | 37,920 |
| 42 | 1.5.1 | 5.1 Functional Testing | 4d | 2016-11-18 | 2016-11-23 | 40, 35, 36, 37, 38, 39 | 7.95d | 0d |  | Software Tester; QA Analyst 1; QA Analyst 2 | 96h | 8,000 |
| 43 | 1.5.2 | 5.2 End User Training | 4d | 2016-11-28 | 2016-12-01 | 42 | 7.95d | 0d |  | Finance Master SME/Trainer; Business Analyst; BI Analyst 2 | 96h | 11,520 |
| 44 | 1.5.3 | 5.3 User Acceptance Testing | 2d | 2016-12-02 | 2016-12-05 | 43 | 9.95d | 7d |  | Business Analyst; BI Analyst 2 | 32h | 3,360 |
| 45 | 1.5.4 | 5.5 Resolve any user issues with software customer support | 4d | 2016-12-09 | 2016-12-14 | 43 | 2.95d | 0d | start no earlier than 2016-12-09 | Business Analyst; Business Analyst 2; Data Architect; Internal IT; Process Architect; Systems Analyst | 192h | 15,040 |
| 46 | 1.6 | **6.0 Move to production** | 21.05d | 2016-12-15 | 2017-01-18 |  | 2.95d |  |  |  | 280.72h | 18,619.6 |
| 47 | 1.6.1 | **6.1 Back up all old systems** | 4d | 2016-12-15 | 2016-12-20 |  | 2.95d |  |  |  | 112h | 10,920 |
| 48 | 1.6.1.1 | 6.1.2 IT back up | 4d | 2016-12-15 | 2016-12-20 | 44, 45 | 2.95d | 0d |  | Systems Analyst; Software Architect [50%]; Software Engineer [50%] | 64h | 6,320 |
| 49 | 1.6.1.2 | 6.1.3 HR back up | 4d | 2016-12-15 | 2016-12-20 | 43, 45 | 2.95d | 0d |  | Software Architect [50%]; Software Engineer [50%]; Systems Analyst 2 | 48h | 4,600 |
| 50 | 1.6.2 | **6.2 Old system shut down** | 2.05d | 2016-12-21 | 2016-12-27 |  | 2.95d |  |  |  | 16.8h | 1,386 |
| 51 | 1.6.2.1 | 6.2.1 IT system shut down | 1.05d | 2016-12-21 | 2016-12-22 | 35, 48 | 2.95d | 0d |  | Systems Analyst [95%] | 8h | 640 |
| 52 | 1.6.2.2 | 6.2.2 HR system shut down | 1.05d | 2016-12-21 | 2016-12-22 | 49, 36 | 2.95d | 0d |  | Systems Analyst 2 [95%] | 8h | 680 |
| 53 | 1.6.2.3 | 6.2.3 Confirm successful all-system shut downn | 1d | 2016-12-22 | 2016-12-27 | 51, 52 | 2.95d | 0d |  | Systems Analyst [5%]; Systems Analyst 2 [5%] | 0.8h | 66 |

| ID | WBS | Task | Duration | Start | Finish | Predecessors | Total slack | Free slack | Constraint | Resources | Work | Cost |
| --- | --- | --- | --- | --- | --- | --- | --- | --- | --- | --- | --- | --- |
| 54 | 1.6.3 | **6.3 Start up new system** | 15d | 2016-12-27 | 2017-01-18 |  | 2.95d |  |  |  | 151.92h | 6,313.6 |
| 55 | 1.6.3.1 | 6.3.1 Initiate new system | 3d | 2016-12-27 | 2017-01-02 | 53 | 2.95d | 0d |  | Systems Analyst [33%]; Internal IT [80%] | 23.92h | 633.6 |
| 56 | 1.6.3.2 | 6.3.2 Check system in IT | 10d | 2017-01-02 | 2017-01-16 | 55 | 2.95d | 0d |  | Internal IT [10%]; Systems Analyst [33%] | 24h | 1,280 |
| 57 | 1.6.3.3 | 6.3.3 Check system in HR | 10d | 2017-01-02 | 2017-01-16 | 55 | 2.95d | 0d |  | Internal HR; Internal IT [10%]; Systems Analyst [50%] | 40h | 1,280 |
| 58 | 1.6.3.4 | 6.3.4 Overall project check | 2d | 2017-01-16 | 2017-01-18 | 56, 57 | 2.95d | 0d |  | Project Manager; Internal HR; Internal IT; Systems Analyst | 64h | 3,120 |
| 59 | 1.7 | **7.0 Documentation** | 2d | 2017-01-18 | 2017-01-20 |  | 2.95d |  |  |  | 16h | 1,840 |
| 60 | 1.7.1 | 7.1 Develop documentation | 2d | 2017-01-18 | 2017-01-20 | 58 | 2.95d | 0d |  | Software Architect | 16h | 1,840 |
| 61 | 1.8 | **8.0 Maintenance** | 7.95d | 2017-01-20 | 2017-01-31 |  | 0d |  |  |  | 44.72h | 5,246.8 |
| 62 | 1.8.1 | 8.1 Create maintenance schedule | 5d | 2017-01-20 | 2017-01-27 | 60 | 2.95d |  |  | Software Engineer [20%]; Project Manager [33%] | 21.2h | 2,478 |
| 63 | 1.8.2 | 8.2 Create monitoring controls | 2d | 2017-01-23 | 2017-01-24 | 60 | 5d |  | start no earlier than 2017-01-23 | Software Engineer [60%]; Project Manager [33%] | 14.88h | 1,759.2 |
| 64 | 1.8.3 | 8.3 Create periodic auditing schedule | 2d | 2017-01-30 | 2017-01-31 | 60 | 0d |  | finish no earlier than 2017-01-31 | Software Engineer [20%]; Project Manager [34%] | 8.64h | 1,009.6 |
| 65 | 2 | Finance Master End | 1d? | 2016-10-03 | 2016-10-03 |  | 81d |  |  |  |  |  |
